# KSS-EPC

Schedule from Primavera P6, 2025-12-11 to 2028-06-26, data date 2026-12-31, costs in GBP, A marks actual dates.
Must finish by 2028-06-11

## Schedule

| ID | Activity | Type | Duration | Start | Finish | Complete | Remaining | Planned start | Planned finish | Total float | Cost | Actual cost |
| --- | --- | --- | --- | --- | --- | --- | --- | --- | --- | --- | --- | --- |
| A1000 | Site establishment, preliminaries and supervision | level of effort | 0d | 2025-12-11 A | 2028-06-26 | 42% | 0d | 2025-12-11 | 2028-06-11 | 5d | 4,302,999.4 | 1,814,517.82 |
| A1010 | Detailed design and engineering |  | 0d | 2025-12-11 A | 2027-01-29 | 88% | 0d | 2025-12-11 | 2027-01-26 | 50d | 3,740,497.06 | 3,301,405.87 |
| A1020 | Area 100 Inlet - Civils - Excavate and blind |  | 0d | 2025-12-11 A | 2027-01-01 | 92% | 0d | 2025-12-11 | 2026-04-06 | 20d | 366,299.81 | 335,622.31 |
| A1030 | Area 100 Inlet - Civils - Pour foundations (part 1 of 3) |  | 0d | 2026-02-05 A | 2027-01-01 | 93% | 0d | 2026-02-05 | 2026-05-19 | 50d | 285,430.98 | 265,980.19 |
| A1040 | Area 100 Inlet - Civils - Pour foundations (part 2 of 3) |  | 0d | 2026-02-23 A | 2027-01-01 | 98% | 0d | 2026-02-23 | 2026-05-06 | 10d | 242,047.22 | 237,119.47 |
| A1050 | Area 100 Inlet - Civils - Pour foundations (part 3 of 3) |  | 0d | 2026-03-14 A | 2027-01-01 | 95% | 0d | 2026-03-14 | 2026-06-15 | 50d | 120,984.75 | 115,449.37 |
| A1060 | Area 100 Inlet - Civils - Backfill and compact (part 1 of 3) |  | 0d | 2026-04-01 A | 2027-01-01 | 94% | 0d | 2026-04-01 | 2026-06-03 | 50d | 322,215.78 | 302,849.39 |
| A1070 | Area 100 Inlet - Civils - Backfill and compact (part 2 of 3) |  | 0d | 2026-04-20 A | 2027-01-01 | 92% | 0d | 2026-04-20 | 2026-07-22 | 20d | 171,015.53 | 158,117.49 |
| A1080 | Area 100 Inlet - Civils - Backfill and compact (part 3 of 3) |  | 0d | 2026-05-08 A | 2027-01-01 | 96% | 0d | 2026-05-08 | 2026-06-28 | 20d | 328,393.39 | 316,866.2 |
| A1090 | Area 100 Inlet - Civils - Install underground drainage (part 1 of 2) |  | 0d | 2026-05-27 A | 2027-01-01 | 93% | 0d | 2026-05-27 | 2026-07-19 | 0d | 313,637.88 | 290,777 |
| A1100 | Area 100 Inlet - Civils - Install underground drainage (part 2 of 2) |  | 0d | 2026-06-23 A | 2027-01-01 | 96% | 0d | 2026-06-23 | 2026-09-10 | 10d | 133,898.81 | 129,083.26 |
| A1110 | Area 200 Process - Civils - Excavate and blind (part 1 of 2) |  | 0d | 2026-01-26 A | 2027-01-01 | 96% | 0d | 2026-01-26 | 2026-04-17 | 0d | 207,039.1 | 198,360.73 |
| A1120 | Area 200 Process - Civils - Excavate and blind (part 2 of 2) |  | 0d | 2026-02-22 A | 2027-01-01 | 97% | 0d | 2026-02-22 | 2026-04-18 | 20d | 259,534.19 | 252,728.85 |
| A1130 | Area 200 Process - Civils - Pour foundations |  | 0d | 2026-03-22 A | 2027-01-01 | 96% | 0d | 2026-03-22 | 2026-06-07 | 0d | 254,385.85 | 243,267.08 |
| A1140 | Area 200 Process - Civils - Backfill and compact (part 1 of 3) |  | 0d | 2026-05-17 A | 2027-01-01 | 94% | 0d | 2026-05-17 | 2026-09-12 | 5d | 363,435.99 | 342,054.32 |
| A1150 | Area 200 Process - Civils - Backfill and compact (part 2 of 3) |  | 0d | 2026-06-04 A | 2027-01-01 | 98% | 0d | 2026-06-04 | 2026-08-30 | 10d | 368,379.61 | 359,956.32 |
| A1160 | Area 200 Process - Civils - Backfill and compact (part 3 of 3) |  | 0d | 2026-06-23 A | 2027-01-01 | 98% | 0d | 2026-06-23 | 2026-09-02 | 10d | 113,487.64 | 111,816.82 |
| A1170 | Area 200 Process - Civils - Install underground drainage (part 1 of 3) |  | 0d | 2026-07-11 A | 2027-01-01 | 96% | 0d | 2026-07-11 | 2026-10-09 | 20d | 354,656.82 | 338,730.06 |
| A1180 | Area 200 Process - Civils - Install underground drainage (part 2 of 3) |  | 0d | 2026-07-30 A | 2027-01-01 | 96% | 0d | 2026-07-30 | 2026-12-02 | 20d | 172,856.25 | 166,159.49 |
| A1190 | Area 200 Process - Civils - Install underground drainage (part 3 of 3) |  | 0d | 2026-08-17 A | 2027-01-01 | 98% | 0d | 2026-08-17 | 2026-10-23 | 30d | 282,974.05 | 277,653.47 |
| A1200 | Area 300 Utilities - Civils - Excavate and blind (part 1 of 2) |  | 0d | 2026-03-12 A | 2027-01-01 | 92% | 0d | 2026-03-12 | 2026-05-22 | 0d | 357,357.47 | 327,104.31 |
| A1210 | Area 300 Utilities - Civils - Excavate and blind (part 2 of 2) |  | 0d | 2026-04-09 A | 2027-01-01 | 92% | 0d | 2026-04-09 | 2026-08-06 | 50d | 196,692.25 | 181,197.67 |
| A1220 | Area 300 Utilities - Civils - Pour foundations (part 1 of 2) |  | 0d | 2026-05-07 A | 2027-01-01 | 95% | 0d | 2026-05-07 | 2026-09-01 | 20d | 199,016.66 | 189,159.65 |
| A1230 | Area 300 Utilities - Civils - Pour foundations (part 2 of 2) |  | 0d | 2026-06-04 A | 2027-01-01 | 93% | 0d | 2026-06-04 | 2026-09-29 | 50d | 280,550.46 | 260,401.46 |
| A1240 | Area 300 Utilities - Civils - Backfill and compact |  | 0d | 2026-07-01 A | 2027-01-01 | 92% | 0d | 2026-07-01 | 2026-10-06 | 20d | 352,368.22 | 322,722.13 |
| A1250 | Area 300 Utilities - Civils - Install underground drainage (part 1 of 3) |  | 0d | 2026-08-26 A | 2027-01-01 | 92% | 0d | 2026-08-26 | 2026-11-02 | 5d | 267,638.94 | 246,638.79 |
| A1260 | Area 300 Utilities - Civils - Install underground drainage (part 2 of 3) |  | 0d | 2026-09-13 A | 2027-01-01 | 92% | 0d | 2026-09-13 | 2026-12-26 | 50d | 351,210.57 | 324,294.74 |
| A1270 | Area 300 Utilities - Civils - Install underground drainage (part 3 of 3) |  | 0d | 2026-10-02 A | 2027-01-01 | 96% | 0d | 2026-10-02 | 2026-12-23 | 0d | 163,623.67 | 157,155.57 |
| A1280 | Area 400 Storage - Civils - Excavate and blind (part 1 of 2) |  | 0d | 2026-04-27 A | 2027-01-01 | 94% | 0d | 2026-04-27 | 2026-07-27 | 0d | 95,367.08 | 89,686.07 |
| A1290 | Area 400 Storage - Civils - Excavate and blind (part 2 of 2) |  | 0d | 2026-05-25 A | 2027-01-01 | 95% | 0d | 2026-05-25 | 2026-08-13 | 0d | 252,612.91 | 240,230.62 |
| A1300 | Area 400 Storage - Civils - Pour foundations |  | 0d | 2026-06-21 A | 2027-01-01 | 94% | 0d | 2026-06-21 | 2026-09-06 | 50d | 255,168.07 | 239,253.57 |
| A1310 | Area 400 Storage - Civils - Backfill and compact |  | 0d | 2026-08-16 A | 2027-01-01 | 97% | 0d | 2026-08-16 | 2026-10-06 | 0d | 265,716.8 | 256,656.1 |
| A1320 | Area 400 Storage - Civils - Install underground drainage (part 1 of 2) |  | 0d | 2026-10-08 A | 2027-01-01 | 98% | 0d | 2026-10-08 | 2026-12-22 | 20d | 345,928.37 | 338,439.42 |
| A1330 | Area 400 Storage - Civils - Install underground drainage (part 2 of 2) |  | 0d | 2026-10-08 A | 2027-01-15 | 85% | 0d | 2026-10-08 | 2027-01-12 | 30d | 169,346.83 | 143,365.78 |
| A1340 | Area 500 Export - Civils - Excavate and blind (part 1 of 2) |  | 0d | 2026-06-12 A | 2027-01-01 | 99% | 0d | 2026-06-12 | 2026-07-29 | 0d | 108,953.19 | 107,751.46 |
| A1350 | Area 500 Export - Civils - Excavate and blind (part 2 of 2) |  | 0d | 2026-07-09 A | 2027-01-01 | 98% | 0d | 2026-07-09 | 2026-10-18 | 10d | 358,642.57 | 350,964.84 |
| A1360 | Area 500 Export - Civils - Pour foundations (part 1 of 2) |  | 0d | 2026-08-06 A | 2027-01-01 | 95% | 0d | 2026-08-06 | 2026-11-11 | 0d | 174,799.02 | 166,050.09 |
| A1370 | Area 500 Export - Civils - Pour foundations (part 2 of 2) |  | 0d | 2026-09-03 A | 2027-01-01 | 94% | 0d | 2026-09-03 | 2026-12-07 | 50d | 141,271.6 | 133,378.19 |
| A1380 | Area 500 Export - Civils - Backfill and compact |  | 0d | 2026-10-01 A | 2027-01-01 | 97% | 0d | 2026-10-01 | 2026-12-11 | 10d | 194,303.79 | 187,843.43 |
| A1390 | Area 500 Export - Civils - Install underground drainage (part 1 of 3) |  | 0d | 2026-10-08 A | 2027-01-01 | 95% | 0d | 2026-10-08 | 2026-12-14 | 0d | 309,961.01 | 294,170.57 |
| A1400 | Area 500 Export - Civils - Install underground drainage (part 2 of 3) |  | 0d | 2026-10-08 A | 2027-01-01 | 93% | 0d | 2026-10-08 | 2026-12-01 | 10d | 317,084.66 | 294,540.55 |
| A1410 | Area 500 Export - Civils - Install underground drainage (part 3 of 3) |  | 0d | 2026-10-08 A | 2027-02-13 | 62% | 0d | 2026-10-08 | 2027-02-10 | 10d | 281,314.42 | 172,941.4 |
| A1420 | Area 600 Control Building - Civils - Excavate and blind |  | 0d | 2026-07-27 A | 2027-01-01 | 95% | 0d | 2026-07-27 | 2026-10-06 | 10d | 153,750.64 | 145,509.72 |
| A1430 | Area 600 Control Building - Civils - Pour foundations (part 1 of 2) |  | 0d | 2026-09-21 A | 2027-01-01 | 97% | 0d | 2026-09-21 | 2026-11-25 | 5d | 144,030.16 | 139,393.18 |
| A1440 | Area 600 Control Building - Civils - Pour foundations (part 2 of 2) |  | 0d | 2026-10-08 A | 2027-01-01 | 95% | 0d | 2026-10-08 | 2026-12-28 | 5d | 285,279 | 270,191.7 |
| A1450 | Area 600 Control Building - Civils - Backfill and compact |  | 0d | 2026-10-08 A | 2027-01-14 | 82% | 0d | 2026-10-08 | 2027-01-11 | 0d | 354,726.96 | 291,722.07 |
| A1460 | Area 600 Control Building - Civils - Install underground drainage (part 1 of 3) |  | 0d | 2026-10-08 A | 2027-02-02 | 69% | 0d | 2026-10-08 | 2027-01-30 | 5d | 213,465.32 | 146,709 |
| A1470 | Area 600 Control Building - Civils - Install underground drainage (part 2 of 3) |  | 0d | 2026-10-08 A | 2027-02-04 | 71% | 0d | 2026-10-08 | 2027-02-01 | 20d | 139,021.01 | 98,468.88 |
| A1480 | Area 600 Control Building - Civils - Install underground drainage (part 3 of 3) |  | 0d | 2026-10-08 A | 2027-01-01 | 92% | 0d | 2026-10-08 | 2026-12-20 | 0d | 272,048.39 | 251,685.87 |
| A1490 | Area 100 Inlet - Structural - Erect primary steel |  | 0d | 2026-04-27 A | 2027-01-01 | 96% | 0d | 2026-04-27 | 2026-08-23 | 20d | 216,970.17 | 207,753.57 |
| A1500 | Area 100 Inlet - Structural - Erect secondary steel |  | 0d | 2026-07-09 A | 2027-01-01 | 96% | 0d | 2026-07-09 | 2026-09-11 | 0d | 125,643.57 | 120,805.32 |
| A1510 | Area 100 Inlet - Structural - Install grating and handrail |  | 0d | 2026-09-20 A | 2027-01-01 | 96% | 0d | 2026-09-20 | 2026-12-18 | 10d | 144,973.2 | 139,081.35 |
| A1520 | Area 200 Process - Structural - Erect primary steel |  | 0d | 2026-06-12 A | 2027-01-01 | 93% | 0d | 2026-06-12 | 2026-10-02 | 50d | 324,115.56 | 300,489.86 |
| A1530 | Area 200 Process - Structural - Erect secondary steel |  | 0d | 2026-08-24 A | 2027-01-01 | 94% | 0d | 2026-08-24 | 2026-10-24 | 5d | 169,254.93 | 159,728.84 |
| A1540 | Area 200 Process - Structural - Install grating and handrail |  | 0d | 2026-11-05 A | 2027-02-28 | 46% | 0d | 2026-11-05 | 2027-02-25 | 30d | 269,754.01 | 123,485.94 |
| A1550 | Area 300 Utilities - Structural - Erect primary steel |  | 0d | 2026-07-27 A | 2027-01-01 | 93% | 0d | 2026-07-27 | 2026-11-16 | 0d | 187,701.16 | 174,796.6 |
| A1560 | Area 300 Utilities - Structural - Erect secondary steel |  | 0d | 2026-10-08 A | 2027-01-01 | 95% | 0d | 2026-10-08 | 2026-12-03 | 0d | 172,947.66 | 164,399.81 |
| A1570 | Area 300 Utilities - Structural - Install grating and handrail |  | 0d | 2026-12-20 A | 2027-04-14 | 9% | 0d | 2026-12-20 | 2027-04-10 | 10d | 167,203.25 | 15,247.74 |
| A1580 | Area 400 Storage - Structural - Erect primary steel |  | 0d | 2026-09-11 A | 2027-01-01 | 93% | 0d | 2026-09-11 | 2026-11-24 | 20d | 207,511.63 | 192,069.08 |
| A1590 | Area 400 Storage - Structural - Erect secondary steel |  | 0d | 2026-11-23 A | 2027-02-14 | 45% | 0d | 2026-11-23 | 2027-02-11 | 0d | 205,469.37 | 91,683.49 |
| A1600 | Area 400 Storage - Structural - Install grating and handrail |  | 0d | 2027-02-04 | 2027-06-10 |  |  | 2027-02-04 | 2027-06-05 | 50d | 135,346.08 |  |
| A1610 | Area 500 Export - Structural - Erect primary steel |  | 0d | 2026-10-27 A | 2027-01-01 | 93% | 0d | 2026-10-27 | 2026-12-12 | 50d | 353,100.25 | 329,787.48 |
| A1620 | Area 500 Export - Structural - Erect secondary steel |  | 0d | 2027-01-08 | 2027-05-11 |  |  | 2027-01-08 | 2027-05-06 | 50d | 365,172.42 |  |
| A1630 | Area 500 Export - Structural - Install grating and handrail |  | 0d | 2027-03-12 | 2027-06-06 |  |  | 2027-03-12 | 2027-06-01 | 10d | 355,006.9 |  |
| A1640 | Area 600 Control Building - Structural - Erect primary steel |  | 0d | 2026-12-11 A | 2027-04-16 | 16% | 0d | 2026-12-11 | 2027-04-12 | 0d | 153,626.97 | 24,070.08 |
| A1650 | Area 600 Control Building - Structural - Erect secondary steel |  | 0d | 2027-02-22 | 2027-06-14 |  |  | 2027-02-22 | 2027-06-09 | 30d | 323,623.85 |  |
| A1660 | Area 600 Control Building - Structural - Install grating and handrail |  | 0d | 2027-03-12 | 2027-06-26 |  |  | 2027-03-12 | 2027-06-20 | 5d | 235,754.44 |  |
| A1670 | Area 100 Inlet - Mechanical - Set equipment |  | 0d | 2026-09-11 A | 2027-01-01 | 92% | 0d | 2026-09-11 | 2026-11-19 | 10d | 186,535.57 | 171,120.63 |
| A1680 | Area 100 Inlet - Mechanical - Align rotating equipment |  | 0d | 2026-11-23 A | 2027-01-29 | 57% | 0d | 2026-11-23 | 2027-01-26 | 0d | 111,025.1 | 63,159.68 |
| A1690 | Area 100 Inlet - Mechanical - Install package skids |  | 0d | 2027-02-04 | 2027-05-14 |  |  | 2027-02-04 | 2027-05-09 | 0d | 171,583.58 |  |

| ID | Activity | Duration | Start | Finish | Complete | Remaining | Planned start | Planned finish | Total float | Cost | Actual cost |
| --- | --- | --- | --- | --- | --- | --- | --- | --- | --- | --- | --- |
| A1700 | Area 200 Process - Mechanical - Set equipment | 0d | 2026-10-27 A | 2027-02-19 | 53% | 0d | 2026-10-27 | 2027-02-16 | 20d | 104,665.98 | 55,549.92 |
| A1710 | Area 200 Process - Mechanical - Align rotating equipment | 0d | 2027-01-08 | 2027-05-13 |  |  | 2027-01-08 | 2027-05-08 | 10d | 284,072.83 |  |
| A1720 | Area 200 Process - Mechanical - Install package skids | 0d | 2027-03-22 | 2027-07-28 |  |  | 2027-03-22 | 2027-07-22 | 0d | 340,183.12 |  |
| A1730 | Area 300 Utilities - Mechanical - Set equipment | 0d | 2026-12-11 A | 2027-04-14 | 16% | 0d | 2026-12-11 | 2027-04-10 | 50d | 251,779.87 | 38,955.21 |
| A1740 | Area 300 Utilities - Mechanical - Align rotating equipment | 0d | 2027-02-22 | 2027-04-14 |  |  | 2027-02-22 | 2027-04-10 | 5d | 298,343.05 |  |
| A1750 | Area 300 Utilities - Mechanical - Install package skids | 0d | 2027-05-06 | 2027-07-11 |  |  | 2027-05-06 | 2027-07-05 | 5d | 175,145.25 |  |
| A1760 | Area 400 Storage - Mechanical - Set equipment | 0d | 2027-01-26 | 2027-05-11 |  |  | 2027-01-26 | 2027-05-06 | 10d | 237,399.94 |  |
| A1770 | Area 400 Storage - Mechanical - Align rotating equipment | 0d | 2027-04-09 | 2027-07-04 |  |  | 2027-04-09 | 2027-06-28 | 50d | 351,931.53 |  |
| A1780 | Area 400 Storage - Mechanical - Install package skids | 0d | 2027-06-21 | 2027-10-03 |  |  | 2027-06-21 | 2027-09-25 | 0d | 186,614.11 |  |
| A1790 | Area 500 Export - Mechanical - Set equipment | 0d | 2027-03-12 | 2027-05-22 |  |  | 2027-03-12 | 2027-05-17 | 0d | 330,529.31 |  |
| A1800 | Area 500 Export - Mechanical - Align rotating equipment | 0d | 2027-05-25 | 2027-08-25 |  |  | 2027-05-25 | 2027-08-18 | 0d | 308,584.45 |  |
| A1810 | Area 500 Export - Mechanical - Install package skids | 0d | 2027-07-27 | 2027-10-18 |  |  | 2027-07-27 | 2027-10-10 | 20d | 146,779.32 |  |
| A1820 | Area 600 Control Building - Mechanical - Set equipment | 0d | 2027-04-27 | 2027-08-01 |  |  | 2027-04-27 | 2027-07-26 | 20d | 318,123 |  |
| A1830 | Area 600 Control Building - Mechanical - Align rotating equipment | 0d | 2027-07-09 | 2027-09-14 |  |  | 2027-07-09 | 2027-09-07 | 0d | 311,169.72 |  |
| A1840 | Area 600 Control Building - Mechanical - Install package skids | 0d | 2027-07-27 | 2027-12-04 |  |  | 2027-07-27 | 2027-11-25 | 50d | 315,146.9 |  |
| A1850 | Area 100 Inlet - Piping - Fabricate spools | 0d | 2026-09-11 A | 2027-01-01 | 98% | 0d | 2026-09-11 | 2026-12-06 | 5d | 250,104.23 | 245,930.73 |
| A1860 | Area 100 Inlet - Piping - Install spools (part 1 of 2) | 0d | 2026-11-30 A | 2027-01-22 | 59% | 0d | 2026-11-30 | 2027-01-19 | 10d | 167,264.8 | 98,146.31 |
| A1870 | Area 100 Inlet - Piping - Install spools (part 2 of 2) | 0d | 2027-01-09 | 2027-03-22 |  |  | 2027-01-09 | 2027-03-18 | 5d | 238,036.68 |  |
| A1880 | Area 100 Inlet - Piping - Hydrotest (part 1 of 2) | 0d | 2027-02-19 | 2027-04-14 |  |  | 2027-02-19 | 2027-04-10 | 50d | 181,570 |  |
| A1890 | Area 100 Inlet - Piping - Hydrotest (part 2 of 2) | 0d | 2027-03-31 | 2027-07-28 |  |  | 2027-03-31 | 2027-07-22 | 20d | 329,245.29 |  |
| A1900 | Area 100 Inlet - Piping - Reinstate and box up | 0d | 2027-05-10 | 2027-07-04 |  |  | 2027-05-10 | 2027-06-28 | 10d | 105,981.6 |  |
| A1910 | Area 200 Process - Piping - Fabricate spools (part 1 of 2) | 0d | 2026-10-27 A | 2027-03-06 | 48% | 0d | 2026-10-27 | 2027-03-02 | 30d | 328,533.47 | 156,728.95 |
| A1920 | Area 200 Process - Piping - Fabricate spools (part 2 of 2) | 0d | 2026-12-06 A | 2027-01-31 | 46% | 0d | 2026-12-06 | 2027-01-28 | 0d | 231,081.4 | 106,346.54 |
| A1930 | Area 200 Process - Piping - Install spools (part 1 of 2) | 0d | 2027-01-15 | 2027-03-19 |  |  | 2027-01-15 | 2027-03-15 | 5d | 112,050.58 |  |
| A1940 | Area 200 Process - Piping - Install spools (part 2 of 2) | 0d | 2027-02-24 | 2027-05-17 |  |  | 2027-02-24 | 2027-05-12 | 20d | 199,969 |  |
| A1950 | Area 200 Process - Piping - Hydrotest (part 1 of 2) | 0d | 2027-04-05 | 2027-06-25 |  |  | 2027-04-05 | 2027-06-19 | 20d | 145,050.14 |  |
| A1960 | Area 200 Process - Piping - Hydrotest (part 2 of 2) | 0d | 2027-05-15 | 2027-08-02 |  |  | 2027-05-15 | 2027-07-27 | 10d | 126,427.9 |  |
| A1970 | Area 200 Process - Piping - Reinstate and box up (part 1 of 3) | 0d | 2027-06-25 | 2027-08-17 |  |  | 2027-06-25 | 2027-08-10 | 50d | 292,186.4 |  |
| A1980 | Area 200 Process - Piping - Reinstate and box up (part 2 of 3) | 0d | 2027-07-21 | 2027-11-18 |  |  | 2027-07-21 | 2027-11-09 | 5d | 248,953.28 |  |
| A1990 | Area 200 Process - Piping - Reinstate and box up (part 3 of 3) | 0d | 2027-08-17 | 2027-10-13 |  |  | 2027-08-17 | 2027-10-05 | 0d | 219,657.47 |  |
| A2000 | Area 300 Utilities - Piping - Fabricate spools (part 1 of 3) | 0d | 2026-12-11 A | 2027-04-04 | 17% | 0d | 2026-12-11 | 2027-03-31 | 0d | 197,376.94 | 33,856.62 |
| A2010 | Area 300 Utilities - Piping - Fabricate spools (part 2 of 3) | 0d | 2027-01-07 | 2027-05-03 |  |  | 2027-01-07 | 2027-04-28 | 20d | 264,495.75 |  |
| A2020 | Area 300 Utilities - Piping - Fabricate spools (part 3 of 3) | 0d | 2027-02-03 | 2027-04-29 |  |  | 2027-02-03 | 2027-04-25 | 0d | 195,207.19 |  |
| A2030 | Area 300 Utilities - Piping - Install spools (part 1 of 2) | 0d | 2027-03-02 | 2027-06-24 |  |  | 2027-03-02 | 2027-06-18 | 0d | 179,310.91 |  |
| A2040 | Area 300 Utilities - Piping - Install spools (part 2 of 2) | 0d | 2027-04-11 | 2027-08-20 |  |  | 2027-04-11 | 2027-08-13 | 0d | 207,895.32 |  |
| A2050 | Area 300 Utilities - Piping - Hydrotest | 0d | 2027-05-21 | 2027-08-01 |  |  | 2027-05-21 | 2027-07-26 | 0d | 240,407.42 |  |
| A2060 | Area 300 Utilities - Piping - Reinstate and box up (part 1 of 3) | 0d | 2027-08-09 | 2027-11-20 |  |  | 2027-08-09 | 2027-11-11 | 20d | 314,340.99 |  |
| A2070 | Area 300 Utilities - Piping - Reinstate and box up (part 2 of 3) | 0d | 2027-09-05 | 2027-11-17 |  |  | 2027-09-05 | 2027-11-08 | 0d | 128,256.43 |  |
| A2080 | Area 300 Utilities - Piping - Reinstate and box up (part 3 of 3) | 0d | 2027-10-02 | 2027-11-28 |  |  | 2027-10-02 | 2027-11-19 | 5d | 182,247.31 |  |
| A2090 | Area 400 Storage - Piping - Fabricate spools (part 1 of 3) | 0d | 2027-01-26 | 2027-05-22 |  |  | 2027-01-26 | 2027-05-17 | 0d | 164,715.35 |  |
| A2100 | Area 400 Storage - Piping - Fabricate spools (part 2 of 3) | 0d | 2027-02-22 | 2027-05-22 |  |  | 2027-02-22 | 2027-05-17 | 20d | 126,259.47 |  |
| A2110 | Area 400 Storage - Piping - Fabricate spools (part 3 of 3) | 0d | 2027-03-20 | 2027-07-16 |  |  | 2027-03-20 | 2027-07-10 | 50d | 275,383.35 |  |
| A2120 | Area 400 Storage - Piping - Install spools (part 1 of 3) | 0d | 2027-04-16 | 2027-08-12 |  |  | 2027-04-16 | 2027-08-05 | 10d | 276,841.54 |  |
| A2130 | Area 400 Storage - Piping - Install spools (part 2 of 3) | 0d | 2027-05-13 | 2027-09-03 |  |  | 2027-05-13 | 2027-08-27 | 20d | 248,153.87 |  |
| A2140 | Area 400 Storage - Piping - Install spools (part 3 of 3) | 0d | 2027-06-09 | 2027-08-08 |  |  | 2027-06-09 | 2027-08-02 | 0d | 254,768.56 |  |
| A2150 | Area 400 Storage - Piping - Hydrotest | 0d | 2027-07-06 | 2027-10-07 |  |  | 2027-07-06 | 2027-09-29 | 20d | 157,465.97 |  |
| A2160 | Area 400 Storage - Piping - Reinstate and box up (part 1 of 2) | 0d | 2027-09-24 | 2027-11-21 |  |  | 2027-09-24 | 2027-11-12 | 50d | 117,589.03 |  |
| A2170 | Area 400 Storage - Piping - Reinstate and box up (part 2 of 2) | 0d | 2027-11-03 | 2028-01-06 |  |  | 2027-11-03 | 2027-12-27 | 0d | 335,730.16 |  |
| A2180 | Area 500 Export - Piping - Fabricate spools | 0d | 2027-03-12 | 2027-07-09 |  |  | 2027-03-12 | 2027-07-03 | 0d | 186,650.42 |  |
| A2190 | Area 500 Export - Piping - Install spools | 0d | 2027-06-01 | 2027-07-25 |  |  | 2027-06-01 | 2027-07-19 | 10d | 124,033.06 |  |
| A2200 | Area 500 Export - Piping - Hydrotest (part 1 of 2) | 0d | 2027-08-20 | 2027-12-22 |  |  | 2027-08-20 | 2027-12-12 | 0d | 355,629.28 |  |
| A2210 | Area 500 Export - Piping - Hydrotest (part 2 of 2) | 0d | 2027-09-29 | 2028-01-10 |  |  | 2027-09-29 | 2027-12-31 | 30d | 313,126.72 |  |
| A2220 | Area 500 Export - Piping - Reinstate and box up | 0d | 2027-11-09 | 2028-03-28 |  |  | 2027-11-09 | 2028-03-16 | 50d | 248,096.72 |  |
| A2230 | Area 600 Control Building - Piping - Fabricate spools (part 1 of 3) | 0d | 2027-04-27 | 2027-08-16 |  |  | 2027-04-27 | 2027-08-09 | 10d | 121,722.67 |  |
| A2240 | Area 600 Control Building - Piping - Fabricate spools (part 2 of 3) | 0d | 2027-05-24 | 2027-09-15 |  |  | 2027-05-24 | 2027-09-08 | 50d | 350,692.36 |  |
| A2250 | Area 600 Control Building - Piping - Fabricate spools (part 3 of 3) | 0d | 2027-06-20 | 2027-08-17 |  |  | 2027-06-20 | 2027-08-10 | 5d | 181,882.75 |  |
| A2260 | Area 600 Control Building - Piping - Install spools (part 1 of 3) | 0d | 2027-07-16 | 2027-09-21 |  |  | 2027-07-16 | 2027-09-14 | 50d | 113,589.17 |  |
| A2270 | Area 600 Control Building - Piping - Install spools (part 2 of 3) | 0d | 2027-08-12 | 2027-12-28 |  |  | 2027-08-12 | 2027-12-18 | 0d | 270,870.24 |  |
| A2280 | Area 600 Control Building - Piping - Install spools (part 3 of 3) | 0d | 2027-09-08 | 2027-12-09 |  |  | 2027-09-08 | 2027-11-30 | 20d | 285,845.17 |  |
| A2290 | Area 600 Control Building - Piping - Hydrotest (part 1 of 2) | 0d | 2027-10-05 | 2027-12-20 |  |  | 2027-10-05 | 2027-12-10 | 10d | 258,003.27 |  |
| A2300 | Area 600 Control Building - Piping - Hydrotest (part 2 of 2) | 0d | 2027-11-14 | 2028-03-28 |  |  | 2027-11-14 | 2028-03-16 | 30d | 246,160.94 |  |
| A2310 | Area 600 Control Building - Piping - Reinstate and box up | 0d | 2027-12-11 | 2028-03-08 |  |  | 2027-12-11 | 2028-02-25 | 5d | 157,270.65 |  |
| A2320 | Area 100 Inlet - Electrical - Install cable tray (part 1 of 2) | 0d | 2026-12-11 A | 2027-04-09 | 16% | 0d | 2026-12-11 | 2027-04-05 | 50d | 359,689.66 | 58,028.98 |
| A2330 | Area 100 Inlet - Electrical - Install cable tray (part 2 of 2) | 0d | 2027-01-24 | 2027-04-18 |  |  | 2027-01-24 | 2027-04-14 | 20d | 249,415.4 |  |
| A2340 | Area 100 Inlet - Electrical - Pull cables (part 1 of 3) | 0d | 2027-03-09 | 2027-06-24 |  |  | 2027-03-09 | 2027-06-18 | 10d | 235,222.58 |  |
| A2350 | Area 100 Inlet - Electrical - Pull cables (part 2 of 3) | 0d | 2027-04-07 | 2027-07-07 |  |  | 2027-04-07 | 2027-07-01 | 20d | 270,034.96 |  |
| A2360 | Area 100 Inlet - Electrical - Pull cables (part 3 of 3) | 0d | 2027-05-06 | 2027-09-09 |  |  | 2027-05-06 | 2027-09-02 | 0d | 133,501.07 |  |
| A2370 | Area 100 Inlet - Electrical - Terminate and test | 0d | 2027-06-04 | 2027-09-06 |  |  | 2027-06-04 | 2027-08-30 | 50d | 225,931.55 |  |
| A2380 | Area 200 Process - Electrical - Install cable tray (part 1 of 3) | 0d | 2027-01-26 | 2027-04-28 |  |  | 2027-01-26 | 2027-04-24 | 5d | 214,743.96 |  |
| A2390 | Area 200 Process - Electrical - Install cable tray (part 2 of 3) | 0d | 2027-02-24 | 2027-06-14 |  |  | 2027-02-24 | 2027-06-09 | 10d | 143,675.2 |  |

| ID | Activity | Duration | Start | Finish | Planned start | Planned finish | Total float | Cost |
| --- | --- | --- | --- | --- | --- | --- | --- | --- |
| A2400 | Area 200 Process - Electrical - Install cable tray (part 3 of 3) | 0d | 2027-03-25 | 2027-06-06 | 2027-03-25 | 2027-06-01 | 0d | 147,289.96 |
| A2410 | Area 200 Process - Electrical - Pull cables (part 1 of 3) | 0d | 2027-04-23 | 2027-07-26 | 2027-04-23 | 2027-07-20 | 0d | 350,755.1 |
| A2420 | Area 200 Process - Electrical - Pull cables (part 2 of 3) | 0d | 2027-05-23 | 2027-09-23 | 2027-05-23 | 2027-09-16 | 0d | 241,015.12 |
| A2430 | Area 200 Process - Electrical - Pull cables (part 3 of 3) | 0d | 2027-06-21 | 2027-10-17 | 2027-06-21 | 2027-10-09 | 30d | 277,899.09 |
| A2440 | Area 200 Process - Electrical - Terminate and test (part 1 of 2) | 0d | 2027-07-20 | 2027-10-31 | 2027-07-20 | 2027-10-23 | 50d | 253,887.66 |
| A2450 | Area 200 Process - Electrical - Terminate and test (part 2 of 2) | 0d | 2027-09-02 | 2028-01-16 | 2027-09-02 | 2028-01-06 | 30d | 338,203.25 |
| A2460 | Area 300 Utilities - Electrical - Install cable tray (part 1 of 2) | 0d | 2027-03-12 | 2027-05-04 | 2027-03-12 | 2027-04-29 | 5d | 224,821.96 |
| A2470 | Area 300 Utilities - Electrical - Install cable tray (part 2 of 2) | 0d | 2027-04-25 | 2027-07-17 | 2027-04-25 | 2027-07-11 | 20d | 139,840.7 |
| A2480 | Area 300 Utilities - Electrical - Pull cables (part 1 of 2) | 0d | 2027-06-08 | 2027-08-19 | 2027-06-08 | 2027-08-12 | 10d | 225,681.07 |
| A2490 | Area 300 Utilities - Electrical - Pull cables (part 2 of 2) | 0d | 2027-07-22 | 2027-11-25 | 2027-07-22 | 2027-11-16 | 10d | 207,929.62 |
| A2500 | Area 300 Utilities - Electrical - Terminate and test (part 1 of 3) | 0d | 2027-09-04 | 2027-12-07 | 2027-09-04 | 2027-11-28 | 5d | 257,878 |
| A2510 | Area 300 Utilities - Electrical - Terminate and test (part 2 of 3) | 0d | 2027-10-03 | 2028-01-05 | 2027-10-03 | 2027-12-26 | 0d | 323,046.62 |
| A2520 | Area 300 Utilities - Electrical - Terminate and test (part 3 of 3) | 0d | 2027-11-01 | 2028-03-05 | 2027-11-01 | 2028-02-22 | 0d | 246,294.41 |
| A2530 | Area 400 Storage - Electrical - Install cable tray (part 1 of 2) | 0d | 2027-04-27 | 2027-09-08 | 2027-04-27 | 2027-09-01 | 5d | 112,216.37 |
| A2540 | Area 400 Storage - Electrical - Install cable tray (part 2 of 2) | 0d | 2027-06-10 | 2027-10-20 | 2027-06-10 | 2027-10-12 | 30d | 308,802.96 |
| A2550 | Area 400 Storage - Electrical - Pull cables | 0d | 2027-07-24 | 2027-10-24 | 2027-07-24 | 2027-10-16 | 0d | 155,704.41 |
| A2560 | Area 400 Storage - Electrical - Terminate and test | 0d | 2027-10-19 | 2028-02-06 | 2027-10-19 | 2028-01-26 | 30d | 307,203.58 |
| A2570 | Area 500 Export - Electrical - Install cable tray | 0d | 2027-06-12 | 2027-10-22 | 2027-06-12 | 2027-10-14 | 5d | 328,376.52 |
| A2580 | Area 500 Export - Electrical - Pull cables | 0d | 2027-09-07 | 2028-01-14 | 2027-09-07 | 2028-01-04 | 10d | 306,779.88 |
| A2590 | Area 500 Export - Electrical - Terminate and test | 0d | 2027-12-04 | 2028-02-14 | 2027-12-04 | 2028-02-03 | 5d | 287,123.3 |
| A2600 | Area 600 Control Building - Electrical - Install cable tray | 0d | 2027-07-27 | 2027-12-03 | 2027-07-27 | 2027-11-24 | 30d | 162,731.67 |
| A2610 | Area 600 Control Building - Electrical - Pull cables | 0d | 2027-10-23 | 2028-01-12 | 2027-10-23 | 2028-01-02 | 30d | 209,278.95 |
| A2620 | Area 600 Control Building - Electrical - Terminate and test (part 1 of 3) | 0d | 2028-01-08 | 2028-05-12 | 2028-01-08 | 2028-04-28 | 0d | 124,827.12 |
| A2630 | Area 600 Control Building - Electrical - Terminate and test (part 2 of 3) | 0d | 2028-01-08 | 2028-03-27 | 2028-01-08 | 2028-03-15 | 10d | 344,936.09 |
| A2640 | Area 600 Control Building - Electrical - Terminate and test (part 3 of 3) | 0d | 2028-01-08 | 2028-03-09 | 2028-01-08 | 2028-02-26 | 10d | 217,317.23 |
| A2650 | Area 100 Inlet - Instrumentation - Install instruments | 0d | 2027-03-12 | 2027-07-02 | 2027-03-12 | 2027-06-26 | 0d | 185,311.18 |
| A2660 | Area 100 Inlet - Instrumentation - Install tubing | 0d | 2027-05-28 | 2027-07-21 | 2027-05-28 | 2027-07-15 | 0d | 183,880.52 |
| A2670 | Area 100 Inlet - Instrumentation - Loop check | 0d | 2027-08-13 | 2027-11-06 | 2027-08-13 | 2027-10-29 | 50d | 113,763.02 |
| A2680 | Area 200 Process - Instrumentation - Install instruments | 0d | 2027-04-27 | 2027-08-10 | 2027-04-27 | 2027-08-04 | 10d | 297,532.9 |
| A2690 | Area 200 Process - Instrumentation - Install tubing | 0d | 2027-07-13 | 2027-10-15 | 2027-07-13 | 2027-10-07 | 0d | 126,889.92 |
| A2700 | Area 200 Process - Instrumentation - Loop check | 0d | 2027-09-28 | 2027-12-19 | 2027-09-28 | 2027-12-09 | 5d | 336,527.55 |
| A2710 | Area 300 Utilities - Instrumentation - Install instruments | 0d | 2027-06-12 | 2027-08-09 | 2027-06-12 | 2027-08-03 | 10d | 211,841.86 |
| A2720 | Area 300 Utilities - Instrumentation - Install tubing | 0d | 2027-08-27 | 2027-11-26 | 2027-08-27 | 2027-11-17 | 5d | 238,096.87 |
| A2730 | Area 300 Utilities - Instrumentation - Loop check | 0d | 2027-11-12 | 2028-01-28 | 2027-11-12 | 2028-01-17 | 5d | 238,153.49 |
| A2740 | Area 400 Storage - Instrumentation - Install instruments | 0d | 2027-07-27 | 2027-11-16 | 2027-07-27 | 2027-11-07 | 10d | 279,847.22 |
| A2750 | Area 400 Storage - Instrumentation - Install tubing | 0d | 2027-10-12 | 2028-01-06 | 2027-10-12 | 2027-12-27 | 5d | 216,779.2 |
| A2760 | Area 400 Storage - Instrumentation - Loop check | 0d | 2027-12-28 | 2028-04-19 | 2027-12-28 | 2028-04-06 | 30d | 277,506.77 |
| A2770 | Area 500 Export - Instrumentation - Install instruments | 0d | 2027-09-11 | 2028-01-22 | 2027-09-11 | 2028-01-12 | 50d | 318,272.21 |
| A2780 | Area 500 Export - Instrumentation - Install tubing | 0d | 2027-11-27 | 2028-01-31 | 2027-11-27 | 2028-01-20 | 0d | 353,426.99 |
| A2790 | Area 500 Export - Instrumentation - Loop check | 0d | 2028-02-11 | 2028-05-07 | 2028-02-11 | 2028-04-24 | 30d | 248,763.31 |
| A2800 | Area 600 Control Building - Instrumentation - Install instruments | 0d | 2027-10-27 | 2028-02-04 | 2027-10-27 | 2028-01-24 | 20d | 276,653.67 |
| A2810 | Area 600 Control Building - Instrumentation - Install tubing | 0d | 2028-01-11 | 2028-04-20 | 2028-01-11 | 2028-04-07 | 0d | 108,661.75 |
| A2820 | Area 600 Control Building - Instrumentation - Loop check | 0d | 2028-02-13 | 2028-05-06 | 2028-02-13 | 2028-04-23 | 0d | 293,529.12 |
| A2830 | Area 100 Inlet - Commissioning - Pre-commission systems | 0d | 2027-12-30 | 2028-04-28 | 2027-12-30 | 2028-04-15 | 50d | 270,831.93 |
| A2840 | Area 100 Inlet - Commissioning - Function test | 0d | 2028-02-11 | 2028-06-11 | 2028-02-11 | 2028-05-27 | 5d | 133,560.4 |
| A2850 | Area 200 Process - Commissioning - Pre-commission systems | 0d | 2028-02-13 | 2028-05-13 | 2028-02-13 | 2028-04-29 | 20d | 346,659.68 |
| A2860 | Area 200 Process - Commissioning - Function test | 0d | 2028-03-28 | 2028-06-26 | 2028-03-28 | 2028-06-11 | 10d | 122,129.86 |
| A2870 | Area 300 Utilities - Commissioning - Pre-commission systems | 0d | 2028-03-30 | 2028-06-26 | 2028-03-30 | 2028-06-11 | 0d | 346,888.68 |
| A2880 | Area 300 Utilities - Commissioning - Function test | 0d | 2028-04-26 | 2028-06-26 | 2028-04-26 | 2028-06-11 | 5d | 271,870.4 |
| A2890 | Area 400 Storage - Commissioning - Pre-commission systems | 0d | 2028-04-26 | 2028-06-26 | 2028-04-26 | 2028-06-11 | 5d | 175,332.85 |
| A2900 | Area 400 Storage - Commissioning - Function test | 0d | 2028-04-26 | 2028-06-26 | 2028-04-26 | 2028-06-11 | 20d | 225,619.35 |
| A2910 | Area 500 Export - Commissioning - Pre-commission systems | 0d | 2028-04-26 | 2028-06-26 | 2028-04-26 | 2028-06-11 | 10d | 287,325.99 |
| A2920 | Area 500 Export - Commissioning - Function test | 0d | 2028-04-26 | 2028-06-26 | 2028-04-26 | 2028-06-11 | 5d | 142,327.05 |
| A2930 | Area 600 Control Building - Commissioning - Pre-commission systems | 0d | 2028-04-26 | 2028-06-26 | 2028-04-26 | 2028-06-11 | 30d | 251,476.85 |
| A2940 | Area 600 Control Building - Commissioning - Function test | 0d | 2028-04-26 | 2028-06-26 | 2028-04-26 | 2028-06-11 | 10d | 119,817.2 |
