# CRN-PWC

Schedule from Primavera P6, 2025-01-06 to 2034-12-15, data date 2026-12-31, costs in GBP, A marks actual dates.
Must finish by 2034-12-15

## Schedule

| ID | Activity | Type | Duration | Start | Finish | Complete | Remaining | Total float | Cost |
| --- | --- | --- | --- | --- | --- | --- | --- | --- | --- |
| A10000 | Preliminaries, site team and supervision | level of effort | 0d | 2025-01-06 A | 2034-12-15 | 31% | 0d | 20d | 12,000,000 |
| A10001 | Programme engineering and design management |  | 0d | 2025-01-06 A | 2034-06-30 | 40% | 0d | 20d | 3,200,000 |
| A10002 | DCS migration: engineering and software |  | 0d | 2025-03-03 A | 2028-06-30 | 59% | 0d | 20d | 2,150,000 |
| A10003 | Pressure part design, Phases 1 to 8 |  | 0d | 2025-01-20 A | 2027-09-30 | 81% | 0d | 20d | 1,350,000 |
| A10004 | Pressure part design, Phases 9 to 19 |  | 0d | 2027-06-01 | 2032-06-30 |  |  | 20d | 800,000 |
| A10005 | EI-004 Tipping hall roller shutters |  | 0d | 2025-11-03 A | 2026-02-13 A | 100% |  |  | 1,060,000 |
| A10006 | EI-009 Turbine hall crane inspection and re-rating |  | 0d | 2026-02-02 A | 2026-03-20 A | 100% |  |  | 690,000 |
| A10007 | Phase 1 (Line 2) - Long-lead procurement and prefabrication |  | 0d | 2025-01-06 A | 2025-08-29 A | 100% |  |  | 2,332,800 |
| A10008 | Phase 1 (Line 2) - Outage preparation and scaffold |  | 0d | 2025-07-10 A | 2025-09-11 A | 100% |  |  | 518,400 |
| A10009 | Phase 1 (Line 2) - Boiler pressure parts |  | 0d | 2025-09-10 A | 2025-10-08 A | 100% |  |  | 1,555,200 |
| A10010 | Phase 1 (Line 2) - Grate and hydraulics |  | 0d | 2025-09-13 A | 2025-10-06 A | 100% |  |  | 518,400 |
| A10011 | Phase 1 (Line 2) - Flue gas treatment: bag filters and SNCR |  | 0d | 2025-09-11 A | 2025-10-10 A | 100% |  |  | 777,600 |
| A10012 | Phase 1 (Line 2) - Insulation, cladding and refractory |  | 0d | 2025-10-02 A | 2025-10-16 A | 100% |  |  | 453,600 |
| A10013 | Phase 1 (Line 2) - Testing, return to service and close-out |  | 0d | 2025-10-08 A | 2025-11-17 A | 100% |  |  | 324,000 |
| A10014 | Phase 2 (Line 1) - Long-lead procurement and prefabrication |  | 0d | 2025-05-13 A | 2026-02-27 A | 100% |  |  | 2,574,000 |
| A10015 | Phase 2 (Line 1) - Outage preparation and scaffold |  | 0d | 2026-01-08 A | 2026-03-12 A | 100% |  |  | 572,000 |
| A10016 | Phase 2 (Line 1) - Boiler pressure parts |  | 0d | 2026-03-11 A | 2026-04-08 A | 100% |  |  | 1,716,000 |
| A10017 | Phase 2 (Line 1) - Grate and hydraulics |  | 0d | 2026-03-14 A | 2026-04-06 A | 100% |  |  | 572,000 |
| A10018 | Phase 2 (Line 1) - Flue gas treatment: bag filters and SNCR |  | 0d | 2026-03-12 A | 2026-04-10 A | 100% |  |  | 858,000 |
| A10019 | Phase 2 (Line 1) - Insulation, cladding and refractory |  | 0d | 2026-04-02 A | 2026-04-16 A | 100% |  |  | 500,500 |
| A10020 | Phase 2 (Line 1) - Testing, return to service and close-out |  | 0d | 2026-04-08 A | 2026-05-18 A | 100% |  |  | 357,500 |
| A10021 | Phase 3 (Line 2) - Long-lead procurement and prefabrication |  | 0d | 2025-11-11 A | 2026-08-28 A | 100% |  |  | 2,383,200 |
| A10022 | Phase 3 (Line 2) - Outage preparation and scaffold |  | 0d | 2026-07-09 A | 2026-09-10 A | 100% |  |  | 529,600 |
| A10023 | Phase 3 (Line 2) - Boiler pressure parts |  | 0d | 2026-09-09 A | 2026-10-07 A | 100% |  |  | 1,588,800 |
| A10024 | Phase 3 (Line 2) - Grate and hydraulics |  | 0d | 2026-09-12 A | 2026-10-05 A | 100% |  |  | 529,600 |
| A10025 | Phase 3 (Line 2) - Flue gas treatment: bag filters and SNCR |  | 0d | 2026-09-10 A | 2026-10-09 A | 100% |  |  | 794,400 |
| A10026 | Phase 3 (Line 2) - Insulation, cladding and refractory |  | 0d | 2026-10-01 A | 2026-10-15 A | 100% |  |  | 463,400 |
| A10027 | Phase 3 (Line 2) - Testing, return to service and close-out |  | 0d | 2026-10-07 A | 2026-11-16 A | 100% |  |  | 331,000 |
| A10028 | Phase 4 (Line 1) - Long-lead procurement and prefabrication |  | 0d | 2026-06-16 A | 2027-04-02 | 71% | 0d | 20d | 2,046,257.67 |
| A10029 | Phase 4 (Line 1) - Outage preparation and scaffold |  | 0d | 2027-02-11 | 2027-04-15 |  |  | 20d | 454,723.93 |
| A10030 | Phase 4 (Line 1) - Boiler pressure parts |  | 0d | 2027-04-14 | 2027-05-12 |  |  | 20d | 1,364,171.78 |
| A10031 | Phase 4 (Line 1) - Grate and hydraulics |  | 0d | 2027-04-17 | 2027-05-10 |  |  | 20d | 454,723.93 |
| A10032 | Phase 4 (Line 1) - Flue gas treatment: bag filters and SNCR |  | 0d | 2027-04-15 | 2027-05-14 |  |  | 20d | 682,085.89 |
| A10033 | Phase 4 (Line 1) - Insulation, cladding and refractory |  | 0d | 2027-05-06 | 2027-05-20 |  |  | 20d | 397,883.44 |
| A10034 | Phase 4 (Line 1) - Testing, return to service and close-out |  | 0d | 2027-05-12 | 2027-06-21 |  |  | 20d | 284,202.45 |
| A10035 | Phase 5 (Line 2) - Long-lead procurement and prefabrication |  | 0d | 2026-11-10 A | 2027-08-27 | 29% | 0d | 20d | 2,046,257.67 |
| A10036 | Phase 5 (Line 2) - Outage preparation and scaffold |  | 0d | 2027-07-08 | 2027-09-09 |  |  | 20d | 454,723.93 |
| A10037 | Phase 5 (Line 2) - Boiler pressure parts |  | 0d | 2027-09-08 | 2027-10-06 |  |  | 20d | 1,364,171.78 |
| A10038 | Phase 5 (Line 2) - Grate and hydraulics |  | 0d | 2027-09-11 | 2027-10-04 |  |  | 20d | 454,723.93 |
| A10039 | Phase 5 (Line 2) - Flue gas treatment: bag filters and SNCR |  | 0d | 2027-09-09 | 2027-10-08 |  |  | 20d | 682,085.89 |
| A10040 | Phase 5 (Line 2) - Insulation, cladding and refractory |  | 0d | 2027-09-30 | 2027-10-14 |  |  | 20d | 397,883.44 |
| A10041 | Phase 5 (Line 2) - Testing, return to service and close-out |  | 0d | 2027-10-06 | 2027-11-15 |  |  | 20d | 284,202.45 |
| A10042 | Phase 6 (Line 1) - Long-lead procurement and prefabrication |  | 0d | 2027-06-17 | 2028-04-02 |  |  | 20d | 2,046,257.67 |
| A10043 | Phase 6 (Line 1) - Outage preparation and scaffold |  | 0d | 2028-02-12 | 2028-04-15 |  |  | 20d | 454,723.93 |
| A10044 | Phase 6 (Line 1) - Boiler pressure parts |  | 0d | 2028-04-14 | 2028-05-12 |  |  | 20d | 1,364,171.78 |
| A10045 | Phase 6 (Line 1) - Grate and hydraulics |  | 0d | 2028-04-17 | 2028-05-10 |  |  | 20d | 454,723.93 |
| A10046 | Phase 6 (Line 1) - Flue gas treatment: bag filters and SNCR |  | 0d | 2028-04-15 | 2028-05-14 |  |  | 20d | 682,085.89 |
| A10047 | Phase 6 (Line 1) - Insulation, cladding and refractory |  | 0d | 2028-05-06 | 2028-05-20 |  |  | 20d | 397,883.44 |
| A10048 | Phase 6 (Line 1) - Testing, return to service and close-out |  | 0d | 2028-05-12 | 2028-06-21 |  |  | 20d | 284,202.45 |
| A10049 | Phase 7 (Line 2) - Long-lead procurement and prefabrication |  | 0d | 2027-11-11 | 2028-08-27 |  |  | 20d | 2,046,257.67 |
| A10050 | Phase 7 (Line 2) - Outage preparation and scaffold |  | 0d | 2028-07-08 | 2028-09-09 |  |  | 20d | 454,723.93 |
| A10051 | Phase 7 (Line 2) - Boiler pressure parts |  | 0d | 2028-09-08 | 2028-10-06 |  |  | 20d | 1,364,171.78 |
| A10052 | Phase 7 (Line 2) - Grate and hydraulics |  | 0d | 2028-09-11 | 2028-10-04 |  |  | 20d | 454,723.93 |
| A10053 | Phase 7 (Line 2) - Flue gas treatment: bag filters and SNCR |  | 0d | 2028-09-09 | 2028-10-08 |  |  | 20d | 682,085.89 |
| A10054 | Phase 7 (Line 2) - Insulation, cladding and refractory |  | 0d | 2028-09-30 | 2028-10-14 |  |  | 20d | 397,883.44 |
| A10055 | Phase 7 (Line 2) - Testing, return to service and close-out |  | 0d | 2028-10-06 | 2028-11-15 |  |  | 20d | 284,202.45 |
| A10056 | Phase 8 (Line 1) - Long-lead procurement and prefabrication |  | 0d | 2028-06-16 | 2029-04-02 |  |  | 20d | 2,046,257.67 |
| A10057 | Phase 8 (Line 1) - Outage preparation and scaffold |  | 0d | 2029-02-11 | 2029-04-15 |  |  | 20d | 454,723.93 |
| A10058 | Phase 8 (Line 1) - Boiler pressure parts |  | 0d | 2029-04-14 | 2029-05-12 |  |  | 20d | 1,364,171.78 |
| A10059 | Phase 8 (Line 1) - Grate and hydraulics |  | 0d | 2029-04-17 | 2029-05-10 |  |  | 20d | 454,723.93 |
| A10060 | Phase 8 (Line 1) - Flue gas treatment: bag filters and SNCR |  | 0d | 2029-04-15 | 2029-05-14 |  |  | 20d | 682,085.89 |
| A10061 | Phase 8 (Line 1) - Insulation, cladding and refractory |  | 0d | 2029-05-06 | 2029-05-20 |  |  | 20d | 397,883.44 |
| A10062 | Phase 8 (Line 1) - Testing, return to service and close-out |  | 0d | 2029-05-12 | 2029-06-21 |  |  | 20d | 284,202.45 |
| A10063 | Phase 9 (Line 2) - Long-lead procurement and prefabrication |  | 0d | 2028-11-10 | 2029-08-27 |  |  | 20d | 2,046,257.67 |
| A10064 | Phase 9 (Line 2) - Outage preparation and scaffold |  | 0d | 2029-07-08 | 2029-09-09 |  |  | 20d | 454,723.93 |
| A10065 | Phase 9 (Line 2) - Boiler pressure parts |  | 0d | 2029-09-08 | 2029-10-06 |  |  | 20d | 1,364,171.78 |
| A10066 | Phase 9 (Line 2) - Grate and hydraulics |  | 0d | 2029-09-11 | 2029-10-04 |  |  | 20d | 454,723.93 |
| A10067 | Phase 9 (Line 2) - Flue gas treatment: bag filters and SNCR |  | 0d | 2029-09-09 | 2029-10-08 |  |  | 20d | 682,085.89 |
| A10068 | Phase 9 (Line 2) - Insulation, cladding and refractory |  | 0d | 2029-09-30 | 2029-10-14 |  |  | 20d | 397,883.44 |
| A10069 | Phase 9 (Line 2) - Testing, return to service and close-out |  | 0d | 2029-10-06 | 2029-11-15 |  |  | 20d | 284,202.45 |

| ID | Activity | Duration | Start | Finish | Total float | Cost |
| --- | --- | --- | --- | --- | --- | --- |
| A10070 | Phase 10 (Line 1) - Long-lead procurement and prefabrication | 0d | 2029-06-16 | 2030-04-02 | 20d | 2,046,257.67 |
| A10071 | Phase 10 (Line 1) - Outage preparation and scaffold | 0d | 2030-02-11 | 2030-04-15 | 20d | 454,723.93 |
| A10072 | Phase 10 (Line 1) - Boiler pressure parts | 0d | 2030-04-14 | 2030-05-12 | 20d | 1,364,171.78 |
| A10073 | Phase 10 (Line 1) - Grate and hydraulics | 0d | 2030-04-17 | 2030-05-10 | 20d | 454,723.93 |
| A10074 | Phase 10 (Line 1) - Flue gas treatment: bag filters and SNCR | 0d | 2030-04-15 | 2030-05-14 | 20d | 682,085.89 |
| A10075 | Phase 10 (Line 1) - Insulation, cladding and refractory | 0d | 2030-05-06 | 2030-05-20 | 20d | 397,883.44 |
| A10076 | Phase 10 (Line 1) - Testing, return to service and close-out | 0d | 2030-05-12 | 2030-06-21 | 20d | 284,202.45 |
| A10077 | Phase 11 (Line 2) - Long-lead procurement and prefabrication | 0d | 2029-11-10 | 2030-08-27 | 20d | 2,046,257.67 |
| A10078 | Phase 11 (Line 2) - Outage preparation and scaffold | 0d | 2030-07-08 | 2030-09-09 | 20d | 454,723.93 |
| A10079 | Phase 11 (Line 2) - Boiler pressure parts | 0d | 2030-09-08 | 2030-10-06 | 20d | 1,364,171.78 |
| A10080 | Phase 11 (Line 2) - Grate and hydraulics | 0d | 2030-09-11 | 2030-10-04 | 20d | 454,723.93 |
| A10081 | Phase 11 (Line 2) - Flue gas treatment: bag filters and SNCR | 0d | 2030-09-09 | 2030-10-08 | 20d | 682,085.89 |
| A10082 | Phase 11 (Line 2) - Insulation, cladding and refractory | 0d | 2030-09-30 | 2030-10-14 | 20d | 397,883.44 |
| A10083 | Phase 11 (Line 2) - Testing, return to service and close-out | 0d | 2030-10-06 | 2030-11-15 | 20d | 284,202.45 |
| A10084 | Phase 12 (Line 1) - Long-lead procurement and prefabrication | 0d | 2030-06-16 | 2031-04-02 | 20d | 2,353,196.32 |
| A10085 | Phase 12 (Line 1) - Outage preparation and scaffold | 0d | 2031-02-11 | 2031-04-15 | 20d | 522,932.52 |
| A10086 | Phase 12 (Line 1) - Boiler pressure parts | 0d | 2031-04-14 | 2031-05-12 | 20d | 1,568,797.55 |
| A10087 | Phase 12 (Line 1) - Grate and hydraulics | 0d | 2031-04-17 | 2031-05-10 | 20d | 522,932.52 |
| A10088 | Phase 12 (Line 1) - Flue gas treatment: bag filters and SNCR | 0d | 2031-04-15 | 2031-05-14 | 20d | 784,398.77 |
| A10089 | Phase 12 (Line 1) - Insulation, cladding and refractory | 0d | 2031-05-06 | 2031-05-20 | 20d | 457,565.95 |
| A10090 | Phase 12 (Line 1) - Testing, return to service and close-out | 0d | 2031-05-12 | 2031-06-21 | 20d | 326,832.82 |
| A10091 | Phase 13 (Line 2) - Long-lead procurement and prefabrication | 0d | 2030-11-10 | 2031-08-27 | 20d | 2,353,196.32 |
| A10092 | Phase 13 (Line 2) - Outage preparation and scaffold | 0d | 2031-07-08 | 2031-09-09 | 20d | 522,932.52 |
| A10093 | Phase 13 (Line 2) - Boiler pressure parts | 0d | 2031-09-08 | 2031-10-06 | 20d | 1,568,797.55 |
| A10094 | Phase 13 (Line 2) - Grate and hydraulics | 0d | 2031-09-11 | 2031-10-04 | 20d | 522,932.52 |
| A10095 | Phase 13 (Line 2) - Flue gas treatment: bag filters and SNCR | 0d | 2031-09-09 | 2031-10-08 | 20d | 784,398.77 |
| A10096 | Phase 13 (Line 2) - Insulation, cladding and refractory | 0d | 2031-09-30 | 2031-10-14 | 20d | 457,565.95 |
| A10097 | Phase 13 (Line 2) - Testing, return to service and close-out | 0d | 2031-10-06 | 2031-11-15 | 20d | 326,832.82 |
| A10098 | Phase 14 (Line 1) - Long-lead procurement and prefabrication | 0d | 2031-06-17 | 2032-04-02 | 20d | 2,046,257.67 |
| A10099 | Phase 14 (Line 1) - Outage preparation and scaffold | 0d | 2032-02-12 | 2032-04-15 | 20d | 454,723.93 |
| A10100 | Phase 14 (Line 1) - Boiler pressure parts | 0d | 2032-04-14 | 2032-05-12 | 20d | 1,364,171.78 |
| A10101 | Phase 14 (Line 1) - Grate and hydraulics | 0d | 2032-04-17 | 2032-05-10 | 20d | 454,723.93 |
| A10102 | Phase 14 (Line 1) - Flue gas treatment: bag filters and SNCR | 0d | 2032-04-15 | 2032-05-14 | 20d | 682,085.89 |
| A10103 | Phase 14 (Line 1) - Insulation, cladding and refractory | 0d | 2032-05-06 | 2032-05-20 | 20d | 397,883.44 |
| A10104 | Phase 14 (Line 1) - Testing, return to service and close-out | 0d | 2032-05-12 | 2032-06-21 | 20d | 284,202.45 |
| A10105 | Phase 15 (Line 2) - Long-lead procurement and prefabrication | 0d | 2031-11-11 | 2032-08-27 | 20d | 2,046,257.67 |
| A10106 | Phase 15 (Line 2) - Outage preparation and scaffold | 0d | 2032-07-08 | 2032-09-09 | 20d | 454,723.93 |
| A10107 | Phase 15 (Line 2) - Boiler pressure parts | 0d | 2032-09-08 | 2032-10-06 | 20d | 1,364,171.78 |
| A10108 | Phase 15 (Line 2) - Grate and hydraulics | 0d | 2032-09-11 | 2032-10-04 | 20d | 454,723.93 |
| A10109 | Phase 15 (Line 2) - Flue gas treatment: bag filters and SNCR | 0d | 2032-09-09 | 2032-10-08 | 20d | 682,085.89 |
| A10110 | Phase 15 (Line 2) - Insulation, cladding and refractory | 0d | 2032-09-30 | 2032-10-14 | 20d | 397,883.44 |
| A10111 | Phase 15 (Line 2) - Testing, return to service and close-out | 0d | 2032-10-06 | 2032-11-15 | 20d | 284,202.45 |
| A10112 | Phase 16 (Line 1) - Long-lead procurement and prefabrication | 0d | 2032-06-16 | 2033-04-02 | 20d | 2,046,257.67 |
| A10113 | Phase 16 (Line 1) - Outage preparation and scaffold | 0d | 2033-02-11 | 2033-04-15 | 20d | 454,723.93 |
| A10114 | Phase 16 (Line 1) - Boiler pressure parts | 0d | 2033-04-14 | 2033-05-12 | 20d | 1,364,171.78 |
| A10115 | Phase 16 (Line 1) - Grate and hydraulics | 0d | 2033-04-17 | 2033-05-10 | 20d | 454,723.93 |
| A10116 | Phase 16 (Line 1) - Flue gas treatment: bag filters and SNCR | 0d | 2033-04-15 | 2033-05-14 | 20d | 682,085.89 |
| A10117 | Phase 16 (Line 1) - Insulation, cladding and refractory | 0d | 2033-05-06 | 2033-05-20 | 20d | 397,883.44 |
| A10118 | Phase 16 (Line 1) - Testing, return to service and close-out | 0d | 2033-05-12 | 2033-06-21 | 20d | 284,202.45 |
| A10119 | Phase 17 (Line 2) - Long-lead procurement and prefabrication | 0d | 2032-11-10 | 2033-08-27 | 20d | 2,046,257.67 |
| A10120 | Phase 17 (Line 2) - Outage preparation and scaffold | 0d | 2033-07-08 | 2033-09-09 | 20d | 454,723.93 |
| A10121 | Phase 17 (Line 2) - Boiler pressure parts | 0d | 2033-09-08 | 2033-10-06 | 20d | 1,364,171.78 |
| A10122 | Phase 17 (Line 2) - Grate and hydraulics | 0d | 2033-09-11 | 2033-10-04 | 20d | 454,723.93 |
| A10123 | Phase 17 (Line 2) - Flue gas treatment: bag filters and SNCR | 0d | 2033-09-09 | 2033-10-08 | 20d | 682,085.89 |
| A10124 | Phase 17 (Line 2) - Insulation, cladding and refractory | 0d | 2033-09-30 | 2033-10-14 | 20d | 397,883.44 |
| A10125 | Phase 17 (Line 2) - Testing, return to service and close-out | 0d | 2033-10-06 | 2033-11-15 | 20d | 284,202.45 |
| A10126 | Phase 18 (Line 1) - Long-lead procurement and prefabrication | 0d | 2033-06-16 | 2034-04-02 | 20d | 2,046,257.67 |
| A10127 | Phase 18 (Line 1) - Outage preparation and scaffold | 0d | 2034-02-11 | 2034-04-15 | 20d | 454,723.93 |
| A10128 | Phase 18 (Line 1) - Boiler pressure parts | 0d | 2034-04-14 | 2034-05-12 | 20d | 1,364,171.78 |
| A10129 | Phase 18 (Line 1) - Grate and hydraulics | 0d | 2034-04-17 | 2034-05-10 | 20d | 454,723.93 |
| A10130 | Phase 18 (Line 1) - Flue gas treatment: bag filters and SNCR | 0d | 2034-04-15 | 2034-05-14 | 20d | 682,085.89 |
| A10131 | Phase 18 (Line 1) - Insulation, cladding and refractory | 0d | 2034-05-06 | 2034-05-20 | 20d | 397,883.44 |
| A10132 | Phase 18 (Line 1) - Testing, return to service and close-out | 0d | 2034-05-12 | 2034-06-21 | 20d | 284,202.45 |
| A10133 | Phase 19 (Line 2) - Long-lead procurement and prefabrication | 0d | 2033-11-10 | 2034-08-27 | 20d | 2,046,257.67 |
| A10134 | Phase 19 (Line 2) - Outage preparation and scaffold | 0d | 2034-07-08 | 2034-09-09 | 20d | 454,723.93 |
| A10135 | Phase 19 (Line 2) - Boiler pressure parts | 0d | 2034-09-08 | 2034-10-06 | 20d | 1,364,171.78 |
| A10136 | Phase 19 (Line 2) - Grate and hydraulics | 0d | 2034-09-11 | 2034-10-04 | 20d | 454,723.93 |
| A10137 | Phase 19 (Line 2) - Flue gas treatment: bag filters and SNCR | 0d | 2034-09-09 | 2034-10-08 | 20d | 682,085.89 |
| A10138 | Phase 19 (Line 2) - Insulation, cladding and refractory | 0d | 2034-09-30 | 2034-10-14 | 20d | 397,883.44 |
| A10139 | Phase 19 (Line 2) - Testing, return to service and close-out | 0d | 2034-10-06 | 2034-11-15 | 20d | 284,202.45 |
